# 软件开发

How a schedule from MS Project changed from version to version. A marks actual dates.

## Version 1 (saved 2017-03-25)

Note of the change: Merge remote-tracking branch 'refs/remotes/origin/master' into LWB

| ID | WBS | Task | Duration | Start | Finish | Predecessors | Complete | Total float | Constraint |
| --- | --- | --- | --- | --- | --- | --- | --- | --- | --- |
| 1 | 1 | **项目立项准备** | 8d? | 2017-03-01 A | 2017-03-10 A |  | 100% |  |  |
| 2 |  | 调研 | 6d? | 2017-03-01 A | 2017-03-08 A |  | 100% |  |  |
| 3 |  | 项目申报 | 3d? | 2017-03-08 A | 2017-03-10 A |  | 100% |  |  |
| 4 | 2 | **分析/软件需求** | 11d | 2017-03-15 A | 2017-03-29 |  | 69% | 7.5d |  |
| 5 |  | 问题识别 | 0d | 2017-03-15 A | 2017-03-17 A |  | 100% |  | finish no earlier than 2017-03-17 |
| 6 |  | 分析需求与综合 | 1d | 2017-03-16 A | 2017-03-20 A | 5 | 100% |  | finish no earlier than 2017-03-17 |
| 7 |  | 定制需求清单和规格说明 | 3.5d | 2017-03-23 A | 2017-03-28 | 6 | 80% | 27d | finish no earlier than 2017-03-28 |
| 8 |  | 评审 | 1d | 2017-03-29 | 2017-03-29 | 7 |  | 27d | finish no earlier than 2017-03-29 |
| 9 | 3 | **系统设计** | 16d | 2017-03-30 | 2017-04-19 |  |  | 2.5d |  |
| 10 |  | 系统模块确定 | 1d | 2017-03-30 | 2017-03-30 | 8 |  | 13.5d | finish no earlier than 2017-03-25 |
| 11 |  | 系统模块设计 | 2d | 2017-04-04 | 2017-04-05 | 10 |  | 10.5d | finish no earlier than 2017-04-05 |
| 12 |  | 系统建模 | 2d | 2017-04-06 | 2017-04-07 | 11 |  | 10.5d | start no earlier than 2017-04-06 |
| 13 |  | 审阅功能规范 | 6d | 2017-04-12 | 2017-04-19 | 12 |  | 8.5d | finish no earlier than 2017-04-19 |
| 14 |  | 完成系统详细设计书并评审 | 0.5d | 2017-04-19 | 2017-04-19 |  |  | 23d | finish no earlier than 2017-04-19 |
| 15 | 4 | **开发** | 13.5d | 2017-04-20 | 2017-05-05 | 9 |  | 2.5d |  |
| 16 |  | 审阅功能规范 | 1d | 2017-04-20 | 2017-04-20 | 14 |  | 8.5d |  |
| 17 |  | 确定模块化/分层设计参数 | 0.5d | 2017-04-21 | 2017-04-21 | 16 |  | 8.5d |  |
| 18 |  | 服务器搭建 | 6d | 2017-04-24 | 2017-04-29 | 17 |  | 1d | finish no earlier than 2017-04-29 |
| 19 |  | 服务器端实现 | 4.5d | 2017-05-01 | 2017-05-05 | 18 |  | 1d |  |
| 20 |  | 客户端实现 | 6d | 2017-04-27 | 2017-05-03 |  |  | 2.5d | finish no earlier than 2017-05-03 |
| 21 |  | 提交源代码 | 0d | 2017-05-03 | 2017-05-03 | 20 |  | 17d |  |
| 22 | 5 | **测试** | 17.5d? | 2017-04-26 | 2017-05-16 |  |  | 7d |  |
| 23 |  | 根据产品规范制定单元测试计划 | 2.5d | 2017-04-26 | 2017-04-28 | 13 |  | 16.5d | finish no earlier than 2017-04-28 |
| 24 |  | 根据产品规范制定整体测试计划 | 1d | 2017-04-29 | 2017-04-29 |  |  | 20d | start no earlier than 2017-04-29 |
| 25 |  | 单元测试 | 4.5d? | 2017-04-29 | 2017-05-04 | 23 |  | 16.5d | finish no earlier than 2017-05-03 |
| 26 | 5.4 | **整体测试** | 9.5d? | 2017-05-05 | 2017-05-16 | 15 |  | 1d |  |
| 27 |  | 测试模块集成情况 | 2d | 2017-05-05 | 2017-05-08 | 21 |  | 1d | finish no earlier than 2017-05-06 |
| 28 |  | 找出不符合规范的异常情况 | 2d | 2017-05-08 | 2017-05-10 | 27 |  | 2d | start no earlier than 2017-05-07 |
| 29 |  | 修改代码 | 1.5d | 2017-05-10 | 2017-05-11 | 28 |  | 2d |  |
| 30 |  | 重新测试经过修改的代码 | 2d | 2017-05-12 | 2017-05-14 | 29 |  | 2d |  |
| 31 |  | 整体测试完成 | 0d | 2017-05-14 | 2017-05-14 | 30 |  | 7d |  |
| 32 |  | 验收测试 | 2d? | 2017-05-15 | 2017-05-16 | 31 |  | 1d |  |
| 33 | 6 | **文档** | 3d | 2017-05-17 | 2017-05-19 | 26 |  | 0d |  |
| 34 |  | 制定“帮助”规范 | 1d | 2017-05-17 | 2017-05-17 |  |  | 1d | finish no earlier than 2017-05-16 |
| 35 |  | 审阅“帮助”文档 | 1d | 2017-05-18 | 2017-05-18 | 34 |  | 1d |  |
| 36 |  | 编写用户手册 | 0.2w | 2017-05-18 | 2017-05-18 | 32FS-5% |  | 0d | must start on 2017-05-18 |
| 37 |  | 整理项目有关文档 | 1d | 2017-05-19 | 2017-05-19 | 36 |  | 0d |  |
| 38 |  | 文档完成 | 0d | 2017-05-19 | 2017-05-19 | 37 |  | 0d |  |
| 39 | 7 | **项目总结** | 3d | 2017-05-20 | 2017-05-23 | 33 |  | 0d |  |
| 40 |  | 项目总结展示准备 | 3d | 2017-05-20 | 2017-05-23 |  |  | 0d | start no earlier than 2017-05-20 |
| 41 |  | 回顾完成 | 0d | 2017-05-23 | 2017-05-23 | 40 |  | 0d |  |

## Version 2 (saved 2017-04-25)

Note of the change: update Gantt diagram

Last finish stays 2017-05-23. Complete tasks 4 → 10.

Changed:

| ID | Task | Start | Finish | Complete | Total float |
| --- | --- | --- | --- | --- | --- |
| 4 | **分析/软件需求** |  | 2017-03-29 A | 69% → 100% | 7.5d → none |
| 7 | 定制需求清单和规格说明 |  | 2017-03-28 A | 80% → 100% | 27d → none |
| 8 | 评审 | 2017-03-29 A | 2017-03-29 A | 0% → 100% | 27d → none |
| 9 | **系统设计** | 2017-03-30 A |  | 0% → 96% |  |
| 10 | 系统模块确定 | 2017-03-30 A | 2017-03-30 A | 0% → 100% | 13.5d → none |
| 11 | 系统模块设计 | 2017-04-04 A | 2017-04-05 A | 0% → 100% | 10.5d → none |
| 12 | 系统建模 | 2017-04-06 A | 2017-04-07 A | 0% → 100% | 10.5d → none |
| 13 | 审阅功能规范 | 2017-04-12 A | 2017-04-19 A | 0% → 100% | 8.5d → none |
